Schedule from ProjectLibre, 2025-12-01 to 2026-01-27.

## Calendars

- Standard: Mon-Fri 08:00-12:00, 13:00-17:00; Sat-Sun off.

## Resources

| Resource | Group | Rate |
| --- | --- | --- |
| Unassigned |  |  |
| Ruth Eira Jones | Producer | 75 |
| Peter von Stackelberg | Story Architect | 50 |
| Dominic Bellamy | Creative Director | 45 |
| Steven Hodson | Web Design/Development |  |

## Schedule

| ID | WBS | Task | Duration | Start | Finish | Predecessors | Constraint | Resources |
| --- | --- | --- | --- | --- | --- | --- | --- | --- |
| 1 | 1 | **Initiate transmedia project** | 9.33d? | 2025-12-01 | 2025-12-12 |  | start no earlier than 2025-12-01 |  |
| 2 | 1.1 | Identify project leadership team | 2d | 2025-12-01 | 2025-12-03 |  | start no earlier than 2025-12-01 | Ruth Eira Jones |
| 3 | 1.2 | Create transmedia project concept | 1d? | 2025-12-03 | 2025-12-04 | 2 |  | Ruth Eira Jones; Peter von Stackelberg |
| 4 | 1.3 | Identify purpose of project | 0.5d? | 2025-12-04 | 2025-12-04 | 3 |  | Peter von Stackelberg; Ruth Eira Jones |
| 5 | 1.4 | Identify user gratifications intended by project author(s) | 0.5d | 2025-12-04 | 2025-12-05 | 4 |  | Peter von Stackelberg |
| 6 | 1.5 | Identify audience demographics | 2.5d | 2025-12-05 | 2025-12-09 | 5 |  | Peter von Stackelberg; Ruth Eira Jones |
| 7 | 1.6 | Identify user gratification expected by audience | 0.5d | 2025-12-09 | 2025-12-10 | 6 |  | Ruth Eira Jones |
| 8 | 1.7 | Identify content consumer type | 0.5d | 2025-12-10 | 2025-12-10 | 7 |  | Ruth Eira Jones |
| 9 | 1.8 | Identify user segments/audience profiles | 1.5d | 2025-12-10 | 2025-12-12 | 8 |  | Peter von Stackelberg; Ruth Eira Jones |
| 10 | 1.9 | Identify audience media usage | 0.33d? | 2025-12-12 | 2025-12-12 | 9 |  | Dominic Bellamy; Ruth Eira Jones; Peter von Stackelberg |
| 11 | 1.10 | Story concept delivered | 0d | 2025-12-12 | 2025-12-12 | 10 |  | Ruth Eira Jones |
| 12 | 2 | **Develop Story World** | 26.42d? | 2025-12-22 | 2026-01-27 |  | start no earlier than 2025-12-22 |  |
| 13 | 2.1 | **Design Storyworld level narrative strucutre** | 16.42d | 2025-12-22 | 2026-01-13 |  |  |  |
| 14 | 2.1.1 | Create storyworld concept | 0.17d | 2025-12-22 | 2025-12-22 | 11 |  | Dominic Bellamy; Peter von Stackelberg; Ruth Eira Jones |
| 15 | 2.1.2 | Create storyworld theme | 0.25d | 2025-12-22 | 2025-12-22 | 14 |  | Peter von Stackelberg; Ruth Eira Jones |
| 16 | 2.1.3 | Identify storyworld genre | 0d | 2025-12-22 | 2025-12-22 | 15 |  | Peter von Stackelberg; Ruth Eira Jones |
| 17 | 2.1.4 | Create character types/groups | 2d | 2025-12-22 | 2025-12-24 | 16 |  | Peter von Stackelberg |
| 18 | 2.1.5 | Create characters | 2d | 2025-12-24 | 2025-12-30 | 17 |  | Dominic Bellamy; Peter von Stackelberg |
| 19 | 2.1.6 | Create significant objects | 1.5d | 2025-12-30 | 2026-01-01 | 18 |  | Dominic Bellamy; Peter von Stackelberg |
| 20 | 2.1.7 | Create events | 5d | 2026-01-01 | 2026-01-08 | 19 |  | Peter von Stackelberg |
| 21 | 2.1.8 | Create settings | 3.5d | 2026-01-08 | 2026-01-13 | 20 |  | Dominic Bellamy; Peter von Stackelberg |
| 22 | 2.1.9 | Storyworld concept documentation delivered | 0d | 2026-01-13 | 2026-01-13 | 21 |  | Dominic Bellamy; Peter von Stackelberg |
| 23 | 2.2 | **Design Storyworld level audience engagement** | 10d? | 2026-01-13 | 2026-01-27 |  |  |  |
| 24 | 2.2.1 | Determine project type | 0.5d? | 2026-01-13 | 2026-01-14 | 22 |  | Peter von Stackelberg; Ruth Eira Jones |
| 25 | 2.2.2 | Determine level of audience engagement | 0.5d? | 2026-01-14 | 2026-01-14 | 24 |  | Peter von Stackelberg; Steven Hodson |
| 26 | 2.2.3 | Determine degree of author control | 1d? | 2026-01-14 | 2026-01-15 | 25 |  |  |
| 27 | 2.2.4 | Determine level of audience control of characters | 1d? | 2026-01-15 | 2026-01-16 | 26 |  |  |
| 28 | 2.2.5 | Determine level of control of significant object(s) | 1d? | 2026-01-16 | 2026-01-19 | 27 |  |  |
| 29 | 2.2.6 | Determine level of audience control of events in storyworld | 1d? | 2026-01-19 | 2026-01-20 | 28 |  |  |
| 30 | 2.2.7 | Determine level of audience control of settings in storyworld | 1d? | 2026-01-20 | 2026-01-21 | 29 |  |  |

| ID | WBS | Task | Duration | Start | Finish | Predecessors |
| --- | --- | --- | --- | --- | --- | --- |
| 31 | 2.2.8 | **Design Storyworld level user interaction** | 4d? | 2026-01-21 | 2026-01-27 |  |
| 32 | 2.2.8.1 | Determine if characters exist in storyworld, real world, or both | 1d? | 2026-01-21 | 2026-01-22 | 30 |
| 33 | 2.2.8.2 | Determine if significant object(s) exist in storyworld, real world or both | 1d? | 2026-01-22 | 2026-01-23 | 32 |
| 34 | 2.2.8.3 | Determine if event exists in storyworld, real world or both | 1d? | 2026-01-23 | 2026-01-26 | 33 |
| 35 | 2.2.8.4 | Determine if settings exists in storyworld, real world or both | 1d? | 2026-01-26 | 2026-01-27 | 34 |
